# Разработка карты города

Schedule from MS Project, 2023-03-01 to 2023-07-26, status date 2023-04-17, costs in ₽, A marks actual dates.
Проект: создание карты города на основе собственного модуля отображения / Длительность: 6 месяцев / Бюджет: 50 000 рублей / Количественный состав команды: 16 человек

## Calendars

- Стандартный: Mon-Fri 09:00-13:00, 14:00-18:00; Sat-Sun off. Exceptions (off unless hours are given): 2023-03-07 09:00-13:00, 14:00-17:00 (Сокращенный день), 2023-03-08 (Международный женский день), 2023-05-01 (Праздник Весны и Труда), 2023-05-08 (С воскресенья 8 января на понедельник 8 мая), 2023-05-09 (День Победы), 2023-06-12 (День России).

## Resources

| Resource | Group | Rate | Cost per use |
| --- | --- | --- | --- |
| Ведущий программист | Программирование | 10 | 100 |
| Программист #1 | Программирование | 7 | 50 |
| Программист #2 | Программирование | 7 | 50 |
| Программист #3 | Программирование | 7 | 50 |
| Программист #4 | Программирование | 7 | 50 |
| Системный аналитик | Аналитика | 20 | 300 |
| Художник-дизайнер | Дизайн | 8 | 70 |
| Технический писатель | Документация | 5 | 20 |
| Web-дизайнер | Internet | 7 | 50 |
| 3D аниматор | Дизайн | 8 | 70 |
| Мультимедиа-корреспондент | М-медиа | 3 | 20 |
| Наборщик данных #1 | Ввод данных | 2 | 10 |
| Наборщик данных #2 | Ввод данных | 2 | 10 |
| Наборщик данных #3 | Ввод данных | 2 | 10 |
| Наборщик данных #4 | Ввод данных | 2 | 10 |
| Наборщик данных #5 | Ввод данных | 2 | 10 |
| Сервер | Аренда | 2 |  |

## Schedule

| ID | WBS | Task | Type | Duration | Start | Finish | Predecessors | Complete | Remaining | Baseline start | Baseline finish | Baseline duration | Total slack | Free slack | Resources | Work | Actual work | Cost | Baseline cost | Actual cost |
| --- | --- | --- | --- | --- | --- | --- | --- | --- | --- | --- | --- | --- | --- | --- | --- | --- | --- | --- | --- | --- |
| 1 | 1 | Начало проекта | milestone | 0w | 2023-03-01 09:00 | 2023-03-01 09:00 |  |  |  | 2023-03-01 09:00 | 2023-03-01 09:00 | 0w | 38.78d | 0.12d |  |  |  |  |  |  |
| 2 | 2 | **Создание интерфейса** |  | 72.06d | 2023-03-01 10:00 A | 2023-06-16 11:26 | 1 | 38% | 44.39d | 2023-03-01 10:00 | 2023-06-16 11:26 | 72.06d | 5.22d |  |  | 560h | 120h | 5,650 | 5,650 | 1,410 |
| 3 | 2.1 | **Разработка дизайна интерфейса** |  | 30.75d | 2023-03-01 10:00 A | 2023-04-13 18:00 |  | 45% | 16.99d | 2023-03-01 10:00 | 2023-04-06 16:00 | 25.5d | 3d | 0d |  | 320h | 120h | 2,770 | 2,770 | 1,030 |
| 4 | 2.1.1 | Разработка 2D графических элементов |  | 3w | 2023-03-01 10:00 | 2023-03-23 13:00 |  |  |  | 2023-03-01 10:00 | 2023-03-23 13:00 | 3w | 38.66d | 0d | Художник-дизайнер | 120h |  | 1,030 | 1,030 |  |
| 5 | 2.1.2 | Разработка 3D графических элементов |  | 2w | 2023-03-01 10:00 | 2023-03-16 12:00 | 4SS |  |  | 2023-03-01 10:00 | 2023-03-16 12:00 | 2w | 38.66d | 0d | 3D аниматор | 80h |  | 710 | 710 |  |
| 6 | 2.1.3 | Создание заставки |  | 4.05w | 2023-03-16 12:00 A | 2023-04-13 18:00 A | 5 | 100% |  | 2023-03-16 12:00 | 2023-04-06 16:00 | 3w |  |  | 3D аниматор | 120h | 120h | 1,030 | 1,030 | 1,030 |
| 7 | 2.2 | Программирование интерфейса |  | 1.5w | 2023-06-05 16:26 | 2023-06-16 11:26 | 3, 12 |  |  | 2023-06-05 16:26 | 2023-06-16 11:26 | 1.5w | 5.22d | 0d | Программист #3; Программист #4; Программист #1; Программист #2 | 240h |  | 1,880 | 1,880 |  |
| 8 | 3 | **Построение базы объектов** |  | 85d | 2023-03-23 14:00 A | 2023-07-26 13:00 |  | 20% | 67.7d | 2023-03-23 14:00 | 2023-07-17 11:00 | 77.75d | 0d |  | Сервер | 5719h | 690.41h | 15,628 | 15,192 | 3,320.83 |
| 9 | 3.1 | Анализ и построение структуры базы объектов |  | 3.45w | 2023-03-23 14:00 A | 2023-04-17 18:00 A |  | 100% |  | 2023-03-23 14:00 | 2023-04-06 16:00 | 2w |  |  | Системный аналитик | 80h | 80h | 1,900 | 1,900 | 1,900 |
| 10 | 3.2 | Программирование средств обработки базы объектов |  | 1.5w | 2023-04-18 09:00 | 2023-04-27 13:00 | 9 |  |  | 2023-04-06 16:00 | 2023-04-18 11:00 | 1.5w | 0d |  | Программист #3; Программист #4; Программист #1; Программист #2 | 240h |  | 1,880 | 1,880 |  |
| 11 | 3.3 | Наполнение базы объектов |  | 12w | 2023-04-27 14:00 | 2023-07-26 13:00 | 10 |  |  | 2023-04-18 11:00 | 2023-07-17 11:00 | 12w | 0d |  | Наборщик данных #1; Наборщик данных #5; Наборщик данных #2; Наборщик данных #3; Наборщик данных #4 | 2400h |  | 4,850 | 4,850 |  |
| 12 | 4 | **Создание ядра GIS** |  | 64.56d | 2023-03-01 10:00 | 2023-06-05 16:26 |  |  |  | 2023-03-01 10:00 | 2023-06-05 16:26 | 64.56d | 5.22d | 0d |  | 1880h |  | 18,466.95 | 18,229.33 |  |
| 13 | 4.1 | Анализ и проектирование ядра |  | 3w | 2023-03-01 10:00 | 2023-03-23 13:00 |  |  |  | 2023-03-01 10:00 | 2023-03-23 13:00 | 3w | 5.22d | 0d | Ведущий программист; Системный аналитик | 240h |  | 4,000 | 4,000 |  |
| 14 | 4.2 | Создание модели ядра |  | 2.02w | 2023-03-23 14:00 | 2023-04-06 14:49 | 13 |  |  | 2023-03-23 14:00 | 2023-04-06 14:49 | 2.02w | 5.22d | 0d | Программист #1; Ведущий программист; Программист #2; Программист #3; Программист #4 | 400h |  | 3,336.46 | 3,336.46 |  |
| 15 | 4.3 | Тестирование модели ядра |  | 0.25w | 2023-04-06 14:49 | 2023-04-19 11:49 | 14 |  |  | 2023-04-06 14:49 | 2023-04-19 11:49 | 0.25w | 5.22d | 0d | Программист #1; Программист #2; Программист #3; Программист #4 | 40h |  | 480 | 480 |  |
| 16 | 4.4 | Создание рабочей версии ядра |  | 6.09w | 2023-04-19 11:49 | 2023-06-05 16:26 | 15 |  |  | 2023-04-19 11:49 | 2023-06-05 16:26 | 6.09w | 5.22d |  | Программист #1; Ведущий программист; Программист #2; Программист #3; Программист #4 | 1200h |  | 9,650.49 | 9,412.87 |  |
| 17 | 5 | Создание мультимедиа-наполнения |  | 6w | 2023-04-14 09:00 A | 2023-05-31 17:00 | 3 | 10% | 5.4w | 2023-04-06 16:00 | 2023-05-24 15:00 | 6w | 38.62d |  | Мультимедиа-корреспондент | 240h | 24h | 740 | 740 | 92 |
| 18 | 6 | Создание справочной системы |  | 2w | 2023-06-27 15:26 | 2023-07-11 17:26 | 7 |  |  | 2023-06-27 15:26 | 2023-07-11 17:26 | 2w | 5.35d |  | Технический писатель | 80h |  | 420 | 420 |  |
| 19 | 7 | **Создание руководства пользователя** |  | 17.38d | 2023-06-01 11:26 | 2023-06-27 15:26 | 7FS-10d |  |  | 2023-06-01 11:26 | 2023-06-27 15:26 | 17.38d | 5.22d |  |  | 160h |  | 1,010 | 1,010 |  |
| 20 | 7.1 | Разработка дизайна руководства |  | 1w | 2023-06-01 11:26 | 2023-06-08 12:26 |  |  |  | 2023-06-01 11:26 | 2023-06-08 12:26 | 1w | 5.22d | 0d | Художник-дизайнер | 40h |  | 390 | 390 |  |
| 21 | 7.2 | Написание руководства пользователя |  | 3w | 2023-06-05 11:26 | 2023-06-27 15:26 | 20SS+2d |  |  | 2023-06-05 11:26 | 2023-06-27 15:26 | 3w | 5.22d | 0d | Технический писатель | 120h |  | 620 | 620 |  |
| 22 | 8 | **Создание web-сайта и поддержки** |  | 23.62d | 2023-06-05 11:26 | 2023-07-07 17:26 |  |  |  | 2023-06-05 11:26 | 2023-07-07 17:26 | 23.62d | 5.22d | 0d |  | 248h |  | 2,106 | 2,106 |  |
| 23 | 8.1 | Разработка структуры сайта |  | 1d | 2023-06-05 11:26 | 2023-06-06 11:26 | 21SS |  |  | 2023-06-05 11:26 | 2023-06-06 11:26 | 1d | 5.22d | 0d | Web-дизайнер | 8h |  | 106 | 106 |  |
| 24 | 8.2 | Разработка дизайна сайта |  | 1.4w | 2023-06-06 11:26 | 2023-06-16 14:26 | 23 |  |  | 2023-06-06 11:26 | 2023-06-16 14:26 | 1.4w | 5.22d | 0d | 3D аниматор; Web-дизайнер; Художник-дизайнер | 120h |  | 1,110 | 1,110 |  |
| 25 | 8.3 | Наполнение сайта |  | 3w | 2023-06-16 14:26 | 2023-07-07 17:26 | 24 |  |  | 2023-06-16 14:26 | 2023-07-07 17:26 | 3w | 5.22d |  | Web-дизайнер | 120h |  | 890 | 890 |  |
| 26 | 9 | Тестирование сайта |  | 2.47w | 2023-06-30 17:26 | 2023-07-19 11:15 | 22FS-1w |  |  | 2023-06-30 17:26 | 2023-07-19 11:15 | 2.47w | 5.22d | 0d | Программист #1; Ведущий программист; Программист #2; Программист #3; Программист #4 | 480h |  | 4,036.48 | 3,942.36 |  |
| 27 | 10 | Сдача сайта в эксплуатацию | milestone | 0w | 2023-07-19 11:15 | 2023-07-19 11:15 | 26 |  |  | 2023-07-19 11:15 | 2023-07-19 11:15 | 0w | 5.22d |  |  |  |  |  |  |  |

| ID | WBS | Task | Duration | Start | Finish | Baseline start | Baseline finish | Baseline duration | Total slack | Constraint | Resources | Work | Cost | Baseline cost |
| --- | --- | --- | --- | --- | --- | --- | --- | --- | --- | --- | --- | --- | --- | --- |
| 28 | 11 | **Совещание** | 95d | 2023-03-01 09:00 | 2023-07-19 10:00 | 2023-03-01 09:00 | 2023-07-19 10:00 | 95d | 5.38d |  |  | 140h | 1,220 | 1,220 |
| 29 | 11.1 | Совещание 1 | 1h | 2023-03-01 09:00 | 2023-03-01 10:00 | 2023-03-01 09:00 | 2023-03-01 10:00 | 1h | 100.25d | start no earlier than 2023-03-01 09:00 | 3D аниматор; Web-дизайнер; Ведущий программист; Мультимедиа-корреспондент; Системный аналитик; Технический писатель; Художник-дизайнер | 7h | 61 | 61 |
| 30 | 11.2 | Совещание 2 | 1h | 2023-03-15 09:00 | 2023-03-15 10:00 | 2023-03-15 09:00 | 2023-03-15 10:00 | 1h | 91.38d | start no earlier than 2023-03-15 09:00 | 3D аниматор; Web-дизайнер; Ведущий программист; Мультимедиа-корреспондент; Системный аналитик; Технический писатель; Художник-дизайнер | 7h | 61 | 61 |
| 31 | 11.3 | Совещание 3 | 1h | 2023-03-22 09:00 | 2023-03-22 10:00 | 2023-03-22 09:00 | 2023-03-22 10:00 | 1h | 86.38d | start no earlier than 2023-03-22 09:00 | 3D аниматор; Web-дизайнер; Ведущий программист; Мультимедиа-корреспондент; Системный аналитик; Технический писатель; Художник-дизайнер | 7h | 61 | 61 |
| 32 | 11.4 | Совещание 4 | 1h | 2023-03-29 09:00 | 2023-03-29 10:00 | 2023-03-29 09:00 | 2023-03-29 10:00 | 1h | 81.38d | start no earlier than 2023-03-29 09:00 | 3D аниматор; Web-дизайнер; Ведущий программист; Мультимедиа-корреспондент; Системный аналитик; Технический писатель; Художник-дизайнер | 7h | 61 | 61 |
| 33 | 11.5 | Совещание 5 | 1h | 2023-04-05 09:00 | 2023-04-05 10:00 | 2023-04-05 09:00 | 2023-04-05 10:00 | 1h | 76.38d | start no earlier than 2023-04-05 09:00 | 3D аниматор; Web-дизайнер; Ведущий программист; Мультимедиа-корреспондент; Системный аналитик; Технический писатель; Художник-дизайнер | 7h | 61 | 61 |
| 34 | 11.6 | Совещание 6 | 1h | 2023-04-12 09:00 | 2023-04-12 10:00 | 2023-04-12 09:00 | 2023-04-12 10:00 | 1h | 71.38d | start no earlier than 2023-04-12 09:00 | 3D аниматор; Web-дизайнер; Ведущий программист; Мультимедиа-корреспондент; Системный аналитик; Технический писатель; Художник-дизайнер | 7h | 61 | 61 |
| 35 | 11.7 | Совещание 7 | 1h | 2023-04-19 09:00 | 2023-04-19 10:00 | 2023-04-19 09:00 | 2023-04-19 10:00 | 1h | 66.38d | start no earlier than 2023-04-19 09:00 | 3D аниматор; Web-дизайнер; Ведущий программист; Мультимедиа-корреспондент; Системный аналитик; Технический писатель; Художник-дизайнер | 7h | 61 | 61 |
| 36 | 11.8 | Совещание 8 | 1h | 2023-04-26 09:00 | 2023-04-26 10:00 | 2023-04-26 09:00 | 2023-04-26 10:00 | 1h | 61.38d | start no earlier than 2023-04-26 09:00 | 3D аниматор; Web-дизайнер; Ведущий программист; Мультимедиа-корреспондент; Системный аналитик; Технический писатель; Художник-дизайнер | 7h | 61 | 61 |
| 37 | 11.9 | Совещание 9 | 1h | 2023-05-03 09:00 | 2023-05-03 10:00 | 2023-05-03 09:00 | 2023-05-03 10:00 | 1h | 57.38d | start no earlier than 2023-05-03 09:00 | 3D аниматор; Web-дизайнер; Ведущий программист; Мультимедиа-корреспондент; Системный аналитик; Технический писатель; Художник-дизайнер | 7h | 61 | 61 |
| 38 | 11.10 | Совещание 10 | 1h | 2023-05-10 09:00 | 2023-05-10 10:00 | 2023-05-10 09:00 | 2023-05-10 10:00 | 1h | 54.38d | start no earlier than 2023-05-10 09:00 | 3D аниматор; Web-дизайнер; Ведущий программист; Мультимедиа-корреспондент; Системный аналитик; Технический писатель; Художник-дизайнер | 7h | 61 | 61 |
| 39 | 11.11 | Совещание 11 | 1h | 2023-05-17 09:00 | 2023-05-17 10:00 | 2023-05-17 09:00 | 2023-05-17 10:00 | 1h | 49.38d | start no earlier than 2023-05-17 09:00 | 3D аниматор; Web-дизайнер; Ведущий программист; Мультимедиа-корреспондент; Системный аналитик; Технический писатель; Художник-дизайнер | 7h | 61 | 61 |
| 40 | 11.12 | Совещание 12 | 1h | 2023-05-24 09:00 | 2023-05-24 10:00 | 2023-05-24 09:00 | 2023-05-24 10:00 | 1h | 44.38d | start no earlier than 2023-05-24 09:00 | 3D аниматор; Web-дизайнер; Ведущий программист; Мультимедиа-корреспондент; Системный аналитик; Технический писатель; Художник-дизайнер | 7h | 61 | 61 |
| 41 | 11.13 | Совещание 13 | 1h | 2023-05-31 09:00 | 2023-05-31 10:00 | 2023-05-31 09:00 | 2023-05-31 10:00 | 1h | 39.38d | start no earlier than 2023-05-31 09:00 | 3D аниматор; Web-дизайнер; Ведущий программист; Мультимедиа-корреспондент; Системный аналитик; Технический писатель; Художник-дизайнер | 7h | 61 | 61 |
| 42 | 11.14 | Совещание 14 | 1h | 2023-06-07 09:00 | 2023-06-07 10:00 | 2023-06-07 09:00 | 2023-06-07 10:00 | 1h | 34.38d | start no earlier than 2023-06-07 09:00 | 3D аниматор; Web-дизайнер; Ведущий программист; Мультимедиа-корреспондент; Системный аналитик; Технический писатель; Художник-дизайнер | 7h | 61 | 61 |
| 43 | 11.15 | Совещание 15 | 1h | 2023-06-14 09:00 | 2023-06-14 10:00 | 2023-06-14 09:00 | 2023-06-14 10:00 | 1h | 30.38d | start no earlier than 2023-06-14 09:00 | 3D аниматор; Web-дизайнер; Ведущий программист; Мультимедиа-корреспондент; Системный аналитик; Технический писатель; Художник-дизайнер | 7h | 61 | 61 |
| 44 | 11.16 | Совещание 16 | 1h | 2023-06-21 09:00 | 2023-06-21 10:00 | 2023-06-21 09:00 | 2023-06-21 10:00 | 1h | 25.38d | start no earlier than 2023-06-21 09:00 | 3D аниматор; Web-дизайнер; Ведущий программист; Мультимедиа-корреспондент; Системный аналитик; Технический писатель; Художник-дизайнер | 7h | 61 | 61 |
| 45 | 11.17 | Совещание 17 | 1h | 2023-06-28 09:00 | 2023-06-28 10:00 | 2023-06-28 09:00 | 2023-06-28 10:00 | 1h | 20.38d | start no earlier than 2023-06-28 09:00 | 3D аниматор; Web-дизайнер; Ведущий программист; Мультимедиа-корреспондент; Системный аналитик; Технический писатель; Художник-дизайнер | 7h | 61 | 61 |
| 46 | 11.18 | Совещание 18 | 1h | 2023-07-05 09:00 | 2023-07-05 10:00 | 2023-07-05 09:00 | 2023-07-05 10:00 | 1h | 15.38d | start no earlier than 2023-07-05 09:00 | 3D аниматор; Web-дизайнер; Ведущий программист; Мультимедиа-корреспондент; Системный аналитик; Технический писатель; Художник-дизайнер | 7h | 61 | 61 |
| 47 | 11.19 | Совещание 19 | 1h | 2023-07-12 09:00 | 2023-07-12 10:00 | 2023-07-12 09:00 | 2023-07-12 10:00 | 1h | 10.38d | start no earlier than 2023-07-12 09:00 | 3D аниматор; Web-дизайнер; Ведущий программист; Мультимедиа-корреспондент; Системный аналитик; Технический писатель; Художник-дизайнер | 7h | 61 | 61 |
| 48 | 11.20 | Совещание 20 | 1h | 2023-07-19 09:00 | 2023-07-19 10:00 | 2023-07-19 09:00 | 2023-07-19 10:00 | 1h | 5.38d | start no earlier than 2023-07-19 09:00 | 3D аниматор; Web-дизайнер; Ведущий программист; Мультимедиа-корреспондент; Системный аналитик; Технический писатель; Художник-дизайнер | 7h | 61 | 61 |
