# Разработка карты города

Schedule from MS Project, 2023-03-01 to 2023-07-07, costs in ₽.
Проект: создание карты города на основе собственного модуля отображения / Длительность: 6 месяцев / Бюджет: 50 000 рублей / Количественный состав команды: 16 человек

## Calendars

- Стандартный: Mon-Fri 09:00-13:00, 14:00-18:00; Sat-Sun off. Exceptions (off unless hours are given): 2023-03-07 09:00-13:00, 14:00-17:00 (Сокращенный день), 2023-03-08 (Международный женский день), 2023-05-01 (Праздник Весны и Труда), 2023-05-08 (С воскресенья 8 января на понедельник 8 мая), 2023-05-09 (День Победы), 2023-06-12 (День России).

## Resources

| Resource | Group | Rate | Cost per use |
| --- | --- | --- | --- |
| Ведущий программист | Программирование | 10 | 100 |
| Программист #1 | Программирование | 7 | 50 |
| Программист #2 | Программирование | 7 | 50 |
| Программист #3 | Программирование | 7 | 50 |
| Программист #4 | Программирование | 7 | 50 |
| Системный аналитик | Аналитика | 20 | 300 |
| Художник-дизайнер | Дизайн | 8 | 70 |
| Технический писатель | Документация | 5 | 20 |
| Web-дизайнер | Internet | 7 | 50 |
| 3D аниматор | Дизайн | 8 | 70 |
| Мультимедиа-корреспондент | М-медиа | 3 | 20 |
| Наборщик данных #1 | Ввод данных | 2 | 10 |
| Наборщик данных #2 | Ввод данных | 2 | 10 |
| Наборщик данных #3 | Ввод данных | 2 | 10 |
| Наборщик данных #4 | Ввод данных | 2 | 10 |
| Наборщик данных #5 | Ввод данных | 2 | 10 |
| Сервер | Аренда | 2 |  |

## Schedule

| ID | WBS | Task | Type | Duration | Start | Finish | Predecessors | Total slack | Free slack | Resources | Work | Cost |
| --- | --- | --- | --- | --- | --- | --- | --- | --- | --- | --- | --- | --- |
| 1 | 1 | Начало проекта | milestone | 0w | 2023-03-01 09:00 | 2023-03-01 09:00 |  | 0d |  |  |  |  |
| 2 | 2 | **Анализ и проектирование** |  | 25.5d | 2023-03-01 10:00 | 2023-04-06 16:00 |  | 0d |  |  | 320h | 6,900 |
| 3 | 2.1 | Анализ и построение структуры базы объектов |  | 2w | 2023-03-01 10:00 | 2023-03-16 12:00 | 1 | 1.88d | 0d | Системный аналитик | 80h | 1,900 |
| 4 | 2.2 | Анализ и проектирование ядра |  | 5w | 2023-03-01 10:00 | 2023-04-06 16:00 | 1 | 0d |  | Ведущий программист; Системный аналитик | 240h | 4,000 |
| 5 | 3 | **Разработка** |  | 74.8d | 2023-03-01 10:00 | 2023-06-21 09:23 |  | 0d |  |  | 3272h | 25,183.33 |
| 6 | 3.1 | **Дизайна** |  | 30.62d | 2023-03-01 10:00 | 2023-04-13 17:00 |  | 22.25d |  |  | 448h | 4,986 |
| 7 | 3.1.1 | **Разработка дизайна интерфейса** |  | 30.62d | 2023-03-01 10:00 | 2023-04-13 17:00 |  | 22.25d | 0d |  | 320h | 2,770 |
| 8 | 3.1.1.1 | Разработка 2D графических элементов |  | 3w | 2023-03-01 10:00 | 2023-03-30 13:00 | 1 | 22.25d | 0d | Художник-дизайнер | 120h | 1,030 |
| 9 | 3.1.1.2 | Разработка 3D графических элементов |  | 2w | 2023-03-01 10:00 | 2023-03-16 12:00 | 8SS | 22.25d | 0d | 3D аниматор | 80h | 710 |
| 10 | 3.1.1.3 | Создание заставки |  | 3w | 2023-03-23 14:00 | 2023-04-13 17:00 | 9 | 22.38d |  | 3D аниматор | 120h | 1,030 |
| 11 | 3.1.2 | Разработка структуры сайта |  | 1d | 2023-03-01 10:00 | 2023-03-02 10:00 | 1 | 39.3d | 0d | Web-дизайнер | 8h | 106 |
| 12 | 3.1.3 | Разработка дизайна сайта |  | 2.95w | 2023-03-02 10:00 | 2023-03-30 12:00 | 11 | 39.3d | 0d | 3D аниматор; Web-дизайнер; Художник-дизайнер | 120h | 1,110 |
| 13 | 3.2 | **Программного обеспечения** |  | 64.67d | 2023-03-16 12:00 | 2023-06-21 09:23 |  | 0d |  |  | 2824h | 20,197.33 |
| 14 | 3.2.1 | Программирование интерфейса |  | 1.53w | 2023-04-20 16:49 | 2023-05-04 14:49 | 7, 16 | 17.4d | 0d | Программист #3; Программист #4; Программист #1; Программист #2 | 240h | 1,880 |
| 15 | 3.2.2 | Программирование средств обработки базы объектов |  | 3w | 2023-03-16 12:00 | 2023-04-06 12:00 | 3 | 1.88d | 0d | Программист #3; Программист #4; Сервер; Программист #1; Программист #2 | 984h | 4,568 |
| 16 | 3.2.3 | Создание модели ядра |  | 2.02w | 2023-04-06 16:00 | 2023-04-20 16:49 | 4 | 0d |  | Программист #1; Ведущий программист; Программист #2; Программист #3; Программист #4 | 400h | 3,336.46 |
| 17 | 3.2.4 | Создание рабочей версии ядра |  | 7.54w | 2023-04-24 09:49 | 2023-06-21 09:23 | 19 | 0d |  | Программист #1; Ведущий программист; Программист #2; Программист #3; Программист #4 | 1200h | 9,412.87 |
| 18 | 4 | **Тестирование** |  | 51.4d | 2023-04-20 16:49 | 2023-07-07 11:03 |  | 0d |  |  | 520h | 4,425.15 |
| 19 | 4.1 | Тестирование модели ядра |  | 0.25w | 2023-04-20 16:49 | 2023-04-24 09:49 | 16 | 0d |  | Программист #1; Программист #2; Программист #3; Программист #4 | 40h | 480 |
| 20 | 4.2 | Тестирование сайта |  | 2.44w | 2023-06-21 09:23 | 2023-07-07 11:03 | 14, 17, 29 | 0d |  | Программист #1; Ведущий программист; Программист #2; Программист #3; Программист #4 | 480h | 3,945.15 |
| 21 | 5 | **Документация** |  | 25.62d | 2023-05-04 14:49 | 2023-06-14 10:49 |  | 17.03d |  |  | 240h | 1,430 |
| 22 | 5.1 | Создание справочной системы |  | 2w | 2023-05-04 14:49 | 2023-05-22 16:49 | 14 | 32.4d |  | Технический писатель | 80h | 420 |
| 23 | 5.2 | **Создание руководства пользователя** |  | 25.62d | 2023-05-04 14:49 | 2023-06-14 10:49 | 14 | 17.03d |  |  | 160h | 1,010 |
| 24 | 5.2.1 | Разработка дизайна руководства |  | 1w | 2023-05-04 14:49 | 2023-05-15 15:49 |  | 17.4d | 0d | Художник-дизайнер | 40h | 390 |
| 25 | 5.2.2 | Написание руководства пользователя |  | 3w | 2023-05-22 16:49 | 2023-06-14 10:49 | 24SS+2d | 17.03d |  | Технический писатель | 120h | 620 |

| ID | WBS | Task | Type | Duration | Start | Finish | Predecessors | Total slack | Constraint | Resources | Work | Cost |
| --- | --- | --- | --- | --- | --- | --- | --- | --- | --- | --- | --- | --- |
| 26 | 6 | **Поддержка** |  | 65d | 2023-03-30 12:00 | 2023-07-05 12:00 |  | 1.88d |  |  | 2640h | 6,120 |
| 27 | 6.1 | Наполнение базы объектов |  | 12w | 2023-04-06 12:00 | 2023-07-05 12:00 | 15 | 1.88d |  | Наборщик данных #1; Наборщик данных #5; Наборщик данных #2; Наборщик данных #3; Наборщик данных #4 | 2400h | 4,850 |
| 28 | 6.2 | Создание мультимедиа-наполнения |  | 3w | 2023-04-13 17:00 | 2023-05-10 11:00 | 7 | 41.01d |  | Мультимедиа-корреспондент | 120h | 380 |
| 29 | 6.3 | Наполнение сайта |  | 3w | 2023-03-30 12:00 | 2023-04-20 16:00 | 12 | 39.3d |  | Web-дизайнер | 120h | 890 |
| 30 | 7 | Сдача сайта в эксплуатацию | milestone | 0w | 2023-07-07 11:03 | 2023-07-07 11:03 | 26, 21, 18, 5, 2 | 0d |  |  |  |  |
| 31 | 8 | **Совещание** |  | 85d | 2023-03-01 09:00 | 2023-07-05 10:00 |  | 2.13d |  |  | 126h | 1,098 |
| 32 | 8.1 | Совещание 1 |  | 1h | 2023-03-01 09:00 | 2023-03-01 10:00 |  | 87.01d | start no earlier than 2023-03-01 09:00 | 3D аниматор; Web-дизайнер; Ведущий программист; Мультимедиа-корреспондент; Системный аналитик; Технический писатель; Художник-дизайнер | 7h | 61 |
| 33 | 8.2 | Совещание 2 |  | 1h | 2023-03-15 09:00 | 2023-03-15 10:00 |  | 78.13d | start no earlier than 2023-03-15 09:00 | 3D аниматор; Web-дизайнер; Ведущий программист; Мультимедиа-корреспондент; Системный аналитик; Технический писатель; Художник-дизайнер | 7h | 61 |
| 34 | 8.3 | Совещание 3 |  | 1h | 2023-03-22 09:00 | 2023-03-22 10:00 |  | 73.13d | start no earlier than 2023-03-22 09:00 | 3D аниматор; Web-дизайнер; Ведущий программист; Мультимедиа-корреспондент; Системный аналитик; Технический писатель; Художник-дизайнер | 7h | 61 |
| 35 | 8.4 | Совещание 4 |  | 1h | 2023-03-29 09:00 | 2023-03-29 10:00 |  | 68.13d | start no earlier than 2023-03-29 09:00 | 3D аниматор; Web-дизайнер; Ведущий программист; Мультимедиа-корреспондент; Системный аналитик; Технический писатель; Художник-дизайнер | 7h | 61 |
| 36 | 8.5 | Совещание 5 |  | 1h | 2023-04-05 09:00 | 2023-04-05 10:00 |  | 63.13d | start no earlier than 2023-04-05 09:00 | 3D аниматор; Web-дизайнер; Ведущий программист; Мультимедиа-корреспондент; Системный аналитик; Технический писатель; Художник-дизайнер | 7h | 61 |
| 37 | 8.6 | Совещание 6 |  | 1h | 2023-04-12 09:00 | 2023-04-12 10:00 |  | 58.13d | start no earlier than 2023-04-12 09:00 | 3D аниматор; Web-дизайнер; Ведущий программист; Мультимедиа-корреспондент; Системный аналитик; Технический писатель; Художник-дизайнер | 7h | 61 |
| 38 | 8.7 | Совещание 7 |  | 1h | 2023-04-19 09:00 | 2023-04-19 10:00 |  | 53.13d | start no earlier than 2023-04-19 09:00 | 3D аниматор; Web-дизайнер; Ведущий программист; Мультимедиа-корреспондент; Системный аналитик; Технический писатель; Художник-дизайнер | 7h | 61 |
| 39 | 8.8 | Совещание 8 |  | 1h | 2023-04-26 09:00 | 2023-04-26 10:00 |  | 48.13d | start no earlier than 2023-04-26 09:00 | 3D аниматор; Web-дизайнер; Ведущий программист; Мультимедиа-корреспондент; Системный аналитик; Технический писатель; Художник-дизайнер | 7h | 61 |
| 40 | 8.9 | Совещание 9 |  | 1h | 2023-05-03 09:00 | 2023-05-03 10:00 |  | 44.13d | start no earlier than 2023-05-03 09:00 | 3D аниматор; Web-дизайнер; Ведущий программист; Мультимедиа-корреспондент; Системный аналитик; Технический писатель; Художник-дизайнер | 7h | 61 |
| 41 | 8.10 | Совещание 10 |  | 1h | 2023-05-10 09:00 | 2023-05-10 10:00 |  | 41.13d | start no earlier than 2023-05-10 09:00 | 3D аниматор; Web-дизайнер; Ведущий программист; Мультимедиа-корреспондент; Системный аналитик; Технический писатель; Художник-дизайнер | 7h | 61 |
| 42 | 8.11 | Совещание 11 |  | 1h | 2023-05-17 09:00 | 2023-05-17 10:00 |  | 36.13d | start no earlier than 2023-05-17 09:00 | 3D аниматор; Web-дизайнер; Ведущий программист; Мультимедиа-корреспондент; Системный аналитик; Технический писатель; Художник-дизайнер | 7h | 61 |
| 43 | 8.12 | Совещание 12 |  | 1h | 2023-05-24 09:00 | 2023-05-24 10:00 |  | 31.13d | start no earlier than 2023-05-24 09:00 | 3D аниматор; Web-дизайнер; Ведущий программист; Мультимедиа-корреспондент; Системный аналитик; Технический писатель; Художник-дизайнер | 7h | 61 |
| 44 | 8.13 | Совещание 13 |  | 1h | 2023-05-31 09:00 | 2023-05-31 10:00 |  | 26.13d | start no earlier than 2023-05-31 09:00 | 3D аниматор; Web-дизайнер; Ведущий программист; Мультимедиа-корреспондент; Системный аналитик; Технический писатель; Художник-дизайнер | 7h | 61 |
| 45 | 8.14 | Совещание 14 |  | 1h | 2023-06-07 09:00 | 2023-06-07 10:00 |  | 21.13d | start no earlier than 2023-06-07 09:00 | 3D аниматор; Web-дизайнер; Ведущий программист; Мультимедиа-корреспондент; Системный аналитик; Технический писатель; Художник-дизайнер | 7h | 61 |
| 46 | 8.15 | Совещание 15 |  | 1h | 2023-06-14 09:00 | 2023-06-14 10:00 |  | 17.13d | start no earlier than 2023-06-14 09:00 | 3D аниматор; Web-дизайнер; Ведущий программист; Мультимедиа-корреспондент; Системный аналитик; Технический писатель; Художник-дизайнер | 7h | 61 |
| 47 | 8.16 | Совещание 16 |  | 1h | 2023-06-21 09:00 | 2023-06-21 10:00 |  | 12.13d | start no earlier than 2023-06-21 09:00 | 3D аниматор; Web-дизайнер; Ведущий программист; Мультимедиа-корреспондент; Системный аналитик; Технический писатель; Художник-дизайнер | 7h | 61 |
| 48 | 8.17 | Совещание 17 |  | 1h | 2023-06-28 09:00 | 2023-06-28 10:00 |  | 7.13d | start no earlier than 2023-06-28 09:00 | 3D аниматор; Web-дизайнер; Ведущий программист; Мультимедиа-корреспондент; Системный аналитик; Технический писатель; Художник-дизайнер | 7h | 61 |
| 49 | 8.18 | Совещание 18 |  | 1h | 2023-07-05 09:00 | 2023-07-05 10:00 |  | 2.13d | start no earlier than 2023-07-05 09:00 | 3D аниматор; Web-дизайнер; Ведущий программист; Мультимедиа-корреспондент; Системный аналитик; Технический писатель; Художник-дизайнер | 7h | 61 |
