# РК1

Schedule from MS Project, 2023-04-03 to 2023-07-17, status date 2023-06-01, costs in ₽, A marks actual dates.

## Calendars

- Стандартный: Mon-Fri 09:00-13:00, 14:00-18:00; Sat-Sun off. Exceptions (off unless hours are given): 2023-04-25 to 2023-07-17 09:00-14:00 (Профилактика оборудования, recurring), 2023-05-01 (Празник Весны и Труда), 2023-05-08 (С воскресенья 8 января на понедельник 8 мая), 2023-05-09 (День Победы), 2023-05-10 09:00-14:00 (Профилактика оборудования (перенос)), 2023-06-12 (День России).

## Resources

| Resource | Group | Unit | Rate | Cost per use |
| --- | --- | --- | --- | --- |
| Аналитик |  |  | 500 | 5000 |
| Ведущий программист | Программисты |  | 437.5 | 3000 |
| Программист 1 | Программисты |  | 312.5 | 2000 |
| Программист 2 | Программисты |  | 312.5 | 2000 |
| Программист 3 | Программисты |  | 312.5 | 2000 |
| Технический писатель |  |  | 250 | 1500 |
| Наборщики данных | Технический персонал |  | 218.75 | 1000 |
| Сервер базы данных | Оборудование |  | 25000 | 10000 |
| Картриджи для принтера | Расходные материалы | шт/мес | 2500 |  |
| Бумага | Расходные материалы | пач/мес | 200 |  |
| Специалист по профилактическим работам |  | выезд | 3000 |  |

## Schedule

| ID | WBS | Task | Type | Duration | Start | Finish | Predecessors | Complete | Remaining | Baseline start | Baseline finish | Baseline duration | Total slack | Free slack | Constraint | Resources | Work | Actual work | Cost | Baseline cost | Actual cost |
| --- | --- | --- | --- | --- | --- | --- | --- | --- | --- | --- | --- | --- | --- | --- | --- | --- | --- | --- | --- | --- | --- |
| 1 | 1 | Начало реализации проекта | milestone | 0d | 2023-04-03 09:00 A | 2023-04-03 09:00 A |  | 100% |  | 2023-04-03 09:00 | 2023-04-03 09:00 | 0d |  |  |  |  |  |  |  |  |  |
| 2 | 2 | **Программирование** |  | 32.88d | 2023-04-04 09:00 A | 2023-05-24 18:00 A |  | 100% |  | 2023-04-04 09:00 | 2023-05-19 10:00 | 29.38d |  |  |  | Сервер базы данных | 816h | 816h | 344,437.5 | 344,437.5 | 344,437.5 |
| 3 | 2.1 | Постановка задачи |  | 5d | 2023-04-04 09:00 A | 2023-04-10 18:00 A | 1FS+1d | 100% |  | 2023-04-04 09:00 | 2023-04-10 18:00 | 5d |  |  |  | Аналитик; Ведущий программист | 80h | 80h | 45,500 | 45,500 | 45,500 |
| 4 | 2.2 | Разработка интерфейса |  | 5d | 2023-04-11 09:00 A | 2023-04-17 18:00 A | 3 | 100% |  | 2023-04-11 09:00 | 2023-04-17 18:00 | 5d |  |  |  | Ведущий программист; Программист 1; Программист 2; Программист 3 | 160h | 160h | 64,000 | 64,000 | 64,000 |
| 5 | 2.3 | Разработка модулей обработки данных |  | 17.25d | 2023-04-26 09:00 A | 2023-05-24 18:00 A | 4 | 100% |  | 2023-04-26 09:00 | 2023-05-19 10:00 | 13.75d |  |  |  | Программист 2; Программист 3; Программист 1 | 240h | 240h | 81,000 | 81,000 | 81,000 |
| 6 | 2.4 | Разработка базы данных |  | 14.38d | 2023-04-11 09:00 A | 2023-05-02 16:00 A | 3 | 100% |  | 2023-04-11 09:00 | 2023-05-02 16:00 | 14.38d |  |  |  | Аналитик; Программист 1; Программист 2; Программист 3 | 240h | 240h | 94,437.5 | 94,437.5 | 94,437.5 |
| 7 | 2.5 | Заполнение базы данных |  | 6d | 2023-05-02 16:00 A | 2023-05-15 10:00 A | 6 | 100% |  | 2023-05-02 16:00 | 2023-05-15 10:00 | 6d |  |  |  | Наборщики данных [200%] | 96h | 96h | 23,000 | 23,000 | 23,000 |
| 8 | 3 | Программирование завершено | milestone | 0d | 2023-05-24 18:00 A | 2023-05-24 18:00 A | 5, 7 | 100% |  | 2023-05-19 10:00 | 2023-05-19 10:00 | 0d |  |  |  |  |  |  |  |  |  |
| 9 | 4 | **Тестирование и отладка** |  | 12.12d | 2023-05-22 09:00 A | 2023-06-07 17:00 |  | 55% | 5.44d | 2023-05-15 12:00 | 2023-06-05 11:40 | 14.58d | 25.5d |  |  |  | 320h | 152h | 126,125 | 123,500 | 66,087.5 |
| 10 | 4.1 | Подготовка тестовых наборов данных |  | 4.21d | 2023-05-22 09:00 A | 2023-05-26 18:00 A | 8FS-5d | 100% |  | 2023-05-15 12:00 | 2023-05-24 16:40 | 6.67d |  |  |  | Программист 1; Программист 3; Программист 2 | 80h | 80h | 31,000 | 31,000 | 31,000 |
| 11 | 4.2 | Тестирование и исправление ошибок |  | 7.5d | 2023-05-29 09:00 A | 2023-06-07 17:00 | 10 | 30% | 5.25d | 2023-05-24 16:40 | 2023-06-05 11:40 | 7.5d | 25.5d | 0d |  | Ведущий программист; Программист 2; Программист 1; Программист 3 | 240h | 72h | 94,125 | 91,500 | 34,537.5 |
| 12 | 5 | Отладка завершена | milestone | 0d | 2023-06-07 17:00 | 2023-06-07 17:00 | 11 |  |  | 2023-06-05 11:40 | 2023-06-05 11:40 | 0d | 25.5d |  |  |  |  |  |  |  |  |
| 13 | 6 | **Разработка документации** |  | 25d | 2023-06-08 12:00 | 2023-07-17 10:00 |  |  |  | 2023-06-02 14:00 | 2023-07-11 15:00 | 25d | 0d |  |  | Картриджи для принтера [2 шт/мес]; Бумага [1 пач/мес] | 200h |  | 58,200 | 58,200 |  |
| 14 | 6.1 | Составление программной документации |  | 10d | 2023-06-08 12:00 | 2023-06-23 16:00 | 8SS+10d |  |  | 2023-06-02 14:00 | 2023-06-19 17:00 | 10d | 0d |  |  | Технический писатель | 80h |  | 21,500 | 21,500 |  |
| 15 | 6.2 | Составление пользовательской документации |  | 15d | 2023-06-23 16:00 | 2023-07-17 10:00 | 14 |  |  | 2023-06-19 17:00 | 2023-07-11 15:00 | 15d | 0d |  |  | Технический писатель | 120h |  | 31,500 | 31,500 |  |
| 16 | 7 | Конец проекта | milestone | 0d | 2023-07-17 10:00 | 2023-07-17 10:00 | 15 |  |  | 2023-07-11 15:00 | 2023-07-11 15:00 | 0d | 0d |  |  |  |  |  |  |  |  |
| 17 | 8 | **Профилактика оборудования** |  | 44.5d | 2023-04-25 09:00 A | 2023-07-04 12:00 |  | 50% | 22.25d | 2023-04-25 09:00 | 2023-07-04 12:00 | 44.5d | 8.38d |  |  |  |  |  | 18,000 | 18,000 | 9,000 |
| 18 | 8.1 | Профилактика оборудования 1 |  | 3h | 2023-04-25 09:00 A | 2023-04-25 12:00 A |  | 100% |  | 2023-04-25 09:00 | 2023-04-25 12:00 | 3h |  |  | start no earlier than 2023-04-25 09:00 | Специалист по профилактическим работам [1 выезд] |  |  | 3,000 | 3,000 | 3,000 |
| 19 | 8.2 | Профилактика оборудования 2 |  | 3h | 2023-05-10 09:00 A | 2023-05-10 12:00 A |  | 100% |  | 2023-05-10 09:00 | 2023-05-10 12:00 | 3h |  |  | start no earlier than 2023-05-09 09:00 | Специалист по профилактическим работам [1 выезд] |  |  | 3,000 | 3,000 | 3,000 |
| 20 | 8.3 | Профилактика оборудования 3 |  | 3h | 2023-05-23 09:00 A | 2023-05-23 12:00 A |  | 100% |  | 2023-05-23 09:00 | 2023-05-23 12:00 | 3h |  |  | start no earlier than 2023-05-23 09:00 | Специалист по профилактическим работам [1 выезд] |  |  | 3,000 | 3,000 | 3,000 |
| 21 | 8.4 | Профилактика оборудования 4 |  | 3h | 2023-06-06 09:00 | 2023-06-06 12:00 |  |  |  | 2023-06-06 09:00 | 2023-06-06 12:00 | 3h | 23.12d | 18.25d | start no earlier than 2023-06-06 09:00 | Специалист по профилактическим работам [1 выезд] |  |  | 3,000 | 3,000 |  |
| 22 | 8.5 | Профилактика оборудования 5 |  | 3h | 2023-06-20 09:00 | 2023-06-20 12:00 |  |  |  | 2023-06-20 09:00 | 2023-06-20 12:00 | 3h | 14.5d | 9.62d | start no earlier than 2023-06-20 09:00 | Специалист по профилактическим работам [1 выезд] |  |  | 3,000 | 3,000 |  |
| 23 | 8.6 | Профилактика оборудования 6 |  | 3h | 2023-07-04 09:00 | 2023-07-04 12:00 |  |  |  | 2023-07-04 09:00 | 2023-07-04 12:00 | 3h | 4.88d | 0d | start no earlier than 2023-07-04 09:00 | Специалист по профилактическим работам [1 выезд] |  |  | 3,000 | 3,000 |  |
